# Plan_VietNamNet_v0_Interation

How a schedule from MS Project changed from version to version. A marks actual dates.

## Version 1 (data date 2010-09-06, saved 2010-09-06, file Plan_VietNamNet_2010-09_Interation - Copy.mpp)

| ID | WBS | Task | Duration | Start | Finish | Predecessors | Total float | Constraint |
| --- | --- | --- | --- | --- | --- | --- | --- | --- |
| 1 | 1 | **Back-end** | 7d | 2010-09-06 | 2010-09-14 |  | 21d |  |
| 2 |  | Nhuận bút | 4d | 2010-09-06 | 2010-09-09 |  | 21d |  |
| 3 |  | Tracking | 4d | 2010-09-09 | 2010-09-14 | 6 | 21d |  |
| 4 |  | Thống kê, báo cáo | 3d | 2010-09-10 | 2010-09-14 | 2 | 20d |  |
| 5 | 2 | **Font-end** | 28d | 2010-09-06 | 2010-10-13 |  | 0d |  |
| 6 |  | Quy định khi coding front-end | 2d | 2010-09-07 | 2010-09-08 |  | 21d | start no earlier than 2010-09-07 |
| 7 | 2.2 | **Trang Tiếng Anh** | 17d | 2010-09-06 | 2010-09-28 |  | 0d |  |
| 8 |  | Thiết kế | 8d | 2010-09-06 | 2010-09-15 |  | 0d |  |
| 9 | 2.2.2 | **Dựng trang** | 9d | 2010-09-16 | 2010-09-28 | 8 | 4d |  |
| 10 |  | Giao diện chung | 2d | 2010-09-16 | 2010-09-17 |  | 4d |  |
| 11 |  | Quảng cáo | 2d | 2010-09-20 | 2010-09-21 | 10 | 4d |  |
| 12 |  | Tracking | 2d | 2010-09-22 | 2010-09-23 | 11 | 4d |  |
| 13 |  | Các hiệu ứng | 2d | 2010-09-24 | 2010-09-27 | 12 | 4d |  |
| 14 |  | Trang chủ | 3d | 2010-09-16 | 2010-09-20 | 8 | 9d |  |
| 15 |  | Phản hồi bài viết | 1d | 2010-09-21 | 2010-09-21 | 14 | 9d |  |
| 16 | 2.2.2.7 | **Photo** | 2d | 2010-09-27 | 2010-09-28 |  | 4d |  |
| 17 |  | Slide show | 1d | 2010-09-28 | 2010-09-28 | 13 | 4d |  |
| 18 |  | Thông tin khác | 1d | 2010-09-27 | 2010-09-27 | 25 | 5d |  |
| 19 |  | Các Danh mục | 4d | 2010-09-16 | 2010-09-21 | 8 | 6d |  |
| 20 |  | Tin bài chi tiết | 2d | 2010-09-22 | 2010-09-23 | 19 | 6d |  |
| 21 |  | In bài viết | 1d | 2010-09-24 | 2010-09-24 | 20 | 6d |  |
| 22 |  | Thăm dò | 3d | 2010-09-16 | 2010-09-20 | 8 | 5d |  |
| 23 |  | Tìm kiếm | 1d | 2010-09-21 | 2010-09-21 | 22 | 5d |  |
| 24 |  | Email bài viết | 1d | 2010-09-22 | 2010-09-22 | 23 | 5d |  |
| 25 |  | RSS | 2d | 2010-09-23 | 2010-09-24 | 24 | 5d |  |
| 26 | 2.3 | **Trang Clip** | 9d | 2010-09-29 | 2010-10-11 |  | 2d |  |
| 27 |  | Chưa có plan | 9d | 2010-09-29 | 2010-10-11 | 7 | 2d |  |
| 28 | 2.4 | **Trang Thể thao** | 20d | 2010-09-16 | 2010-10-13 |  | 0d |  |
| 29 |  | Thiết kế | 11d | 2010-09-16 | 2010-09-30 | 8 | 0d |  |
| 30 | 2.4.2 | **Dựng trang** | 9d | 2010-10-01 | 2010-10-13 | 29 | 0d |  |
| 31 |  | Giao diện chung | 1d | 2010-10-01 | 2010-10-01 |  | 2d |  |
| 32 |  | Quảng cáo | 1d | 2010-10-04 | 2010-10-04 | 31 | 2d |  |
| 33 |  | Tracking | 1d | 2010-10-05 | 2010-10-05 | 32 | 2d |  |
| 34 |  | Các hiệu ứng | 2d | 2010-10-06 | 2010-10-07 | 33 | 2d |  |
| 35 |  | Trang chủ | 3d | 2010-10-01 | 2010-10-05 | 29 | 5d |  |
| 36 |  | Phản hồi bài viết | 1d | 2010-10-06 | 2010-10-06 | 35 | 5d |  |
| 37 | 2.4.2.7 | **Photo** | 3d | 2010-10-08 | 2010-10-12 |  | 0d |  |
| 38 |  | Slide show | 1d | 2010-10-08 | 2010-10-08 | 34 | 2d |  |
| 39 |  | Thông tin khác | 1d | 2010-10-12 | 2010-10-12 | 49 | 0d |  |
| 40 | 2.4.2.8 | **Video** | 3d | 2010-10-11 | 2010-10-13 |  | 0d |  |
| 41 |  | Video | 1d | 2010-10-11 | 2010-10-11 | 38 | 2d |  |
| 42 |  | Thông tin khác | 1d | 2010-10-13 | 2010-10-13 | 39 | 0d |  |
| 43 |  | Các Danh mục | 4d | 2010-10-01 | 2010-10-06 | 29 | 2d |  |
| 44 |  | Tin bài chi tiết | 2d | 2010-10-07 | 2010-10-08 | 43 | 2d |  |
| 45 |  | In bài viết | 1d | 2010-10-11 | 2010-10-11 | 44 | 2d |  |
| 46 |  | Thăm dò | 3d | 2010-10-01 | 2010-10-05 | 29 | 0d |  |
| 47 |  | Tìm kiếm | 1d | 2010-10-06 | 2010-10-06 | 46 | 0d |  |
| 48 |  | Email bài viết | 1d | 2010-10-07 | 2010-10-07 | 47 | 0d |  |
| 49 |  | RSS | 2d | 2010-10-08 | 2010-10-11 | 48 | 0d |  |
| 50 | 3 | **Update** | 5d | 2010-09-06 | 2010-09-10 |  | 26d |  |
| 51 |  | LayoutDAO | 3d | 2010-09-06 | 2010-09-08 |  | 26d |  |
| 52 |  | User, Visit | 2d | 2010-09-09 | 2010-09-10 | 51 | 26d |  |
| 53 | 4 | **Test** | 24d | 2010-09-15 | 2010-10-18 |  | 0d |  |
| 54 |  | Back-end | 3d | 2010-09-15 | 2010-09-17 | 1 | 21d |  |
| 55 |  | Trang Tiếng Anh | 3d | 2010-09-29 | 2010-10-01 | 7 | 11d |  |
| 56 |  | Trang Clip | 3d | 2010-10-12 | 2010-10-14 | 26 | 2d |  |
| 57 |  | Trang Thể thao | 3d | 2010-10-14 | 2010-10-18 | 28 | 0d |  |

## Version 2 (data date 2010-09-06, saved 2010-10-07, file Plan_VietNamNet_2010-09_Interation.mpp)

Last finish 2010-10-18 → 2010-10-15 (-3d). Complete tasks 0 → 19.

Added:

| ID | Task | Duration | Start | Finish | Predecessors | Constraint | Resources |
| --- | --- | --- | --- | --- | --- | --- | --- |
| 4 | Chỉnh sửa, hoàn thiện CMS | 2d | 2010-09-15 A | 2010-09-16 A | 5 |  | Đào Tuấn Anh |
| 10 | Tạo, cấu hình db | 1d | 2010-09-09 A | 2010-09-09 A |  | start no earlier than 2010-09-09 | Đào Tuấn Anh |
| 11 | Chỉnh sửa giao diện | 2d | 2010-09-09 A | 2010-09-10 A | 9 |  | Cản Mạnh Tuấn |
| 12 | Thêm form gửi Video | 6d | 2010-09-13 A | 2010-09-20 A | 9 |  | Lục Văn Tiến |
| 13 | Deploy | 3d | 2010-09-13 A | 2010-09-15 A | 10, 12 |  | Đào Tuấn Anh |
| 14 | **Trang Union** | 2d | 2010-09-13 | 2010-09-14 |  |  |  |
| 15 | Chỉnh sửa phản hồi | 2d | 2010-09-13 | 2010-09-14 | 11 |  | Cản Mạnh Tuấn |
| 16 | **Trang Mobile** | 2d | 2010-09-16 A | 2010-09-17 A |  |  |  |
| 17 | Thiết kế | 1d | 2010-09-16 A | 2010-09-16 A |  | start no earlier than 2010-09-16 | Lê Nguyễn Lâm |
| 18 | Crawling | 1d | 2010-09-17 A | 2010-09-17 A | 17 |  | Dương Hải Phong |
| 19 | Coding | 1d | 2010-09-17 A | 2010-09-17 A | 17 |  | Đào Tuấn Anh |
| 20 | **Rolo Service** | 2d | 2010-09-20 A | 2010-09-21 A |  |  |  |
| 21 | Lấy thông tin từ Rolo | 2d | 2010-09-20 A | 2010-09-21 A | 18 |  | Dương Hải Phong |
| 22 | Xuất thông tin ra API - webservice | 1d | 2010-09-20 A | 2010-09-20 A | 19 |  | Đào Tuấn Anh |
| 37 | **Video** | 1d | 2010-09-30 | 2010-09-30 |  |  |  |
| 38 | Slide show | 1d | 2010-09-30 | 2010-09-30 | 35 |  | Đào Tuấn Anh |
| 39 | Thông tin khác | 1d | 2010-09-30 | 2010-09-30 | 36 |  | Lục Văn Tiến |
| 45 | Deploy | 1d | 2010-10-04 | 2010-10-04 | 25 |  | Đào Tuấn Anh |
| 68 | Deploy | 1d | 2010-10-12 | 2010-10-12 | 48 |  | Đào Tuấn Anh |

Changed:

| ID | Task | Start | Finish | Duration | Complete | Total float | Predecessors | Other |
| --- | --- | --- | --- | --- | --- | --- | --- | --- |
| 1 | **Back-end** | 2010-09-06 A | 2010-09-14 → 2010-09-16 (+2d) | 7d → 9d | 0% → 80% | 21d → 18d |  |  |
| 2 | Nhuận bút | 2010-09-06 A | 2010-09-09 → 2010-09-10 A (+1d) | 4d → 5d | 0% → 100% | 21d → none |  |  |
| 3 | Thống kê, báo cáo | 2010-09-10 → 2010-09-13 A (+3d) | 2010-09-14 → 2010-09-15 A (+1d) |  | 0% → 100% | 20d → none |  |  |
| 5 | Tracking | 2010-09-09 A |  |  | 0% → 30% | 21d → 20d |  |  |
| 6 | **Font-end** | 2010-09-06 A | 2010-10-13 → 2010-10-12 (-1d) | 28d → 27d | 0% → 36% | 0d → 3d |  |  |
| 7 | Quy định khi coding front-end | 2010-09-07 A | 2010-09-08 A |  | 0% → 100% | 21d → none |  |  |
| 8 | **Trang Clip** | 2010-09-29 → 2010-09-08 A (-21d) | 2010-10-11 → 2010-09-20 A (-21d) |  | 0% → 100% | 2d → none |  |  |
| 9 | Thiết kế | 2010-09-29 → 2010-09-08 A (-21d) | 2010-10-11 → 2010-09-08 A (-33d) | 9d → 1d | 0% → 100% | 2d → none | 23 → none | was named Chưa có plan; constraint none → start no earlier than 2010-09-08; resources none → Lê Nguyễn Lâm |
| 23 | **Trang Tiếng Anh** | 2010-09-06 A | 2010-09-28 → 2010-10-12 (+14d) | 17d → 27d | 0% → 19% |  |  |  |
| 24 | Thiết kế | 2010-09-06 A | 2010-09-15 A |  | 0% → 100% | 0d → none |  |  |
| 25 | **Dựng trang** | 2010-09-16 → 2010-09-22 A (+6d) | 2010-09-28 → 2010-10-01 (+3d) | 9d → 8d | 0% → 23% | 4d → 6d | 24 → 24, 16, 20 |  |
| 26 | Giao diện chung | 2010-09-16 → 2010-09-22 (+6d) | 2010-09-17 → 2010-09-22 (+5d) | 2d → 1d |  | 4d → 6d |  |  |
| 27 | Quảng cáo | 2010-09-20 → 2010-09-23 (+3d) | 2010-09-21 → 2010-09-23 (+2d) | 2d → 1d |  | 4d → 6d |  |  |
| 28 | Tracking | 2010-09-22 → 2010-09-24 (+2d) | 2010-09-23 → 2010-09-27 (+4d) |  |  | 4d → 6d |  |  |
| 29 | Các hiệu ứng | 2010-09-24 → 2010-09-28 (+4d) | 2010-09-27 → 2010-09-28 (+1d) | 2d → 1d |  | 4d → 6d |  |  |
| 30 | Trang chủ | 2010-09-16 → 2010-09-27 (+11d) | 2010-09-20 → 2010-09-29 (+9d) |  |  | 9d → 8d |  | constraint none → start no earlier than 2010-09-27 |
| 31 | Các Danh mục | 2010-09-16 → 2010-09-22 (+6d) | 2010-09-21 → 2010-09-24 (+3d) | 4d → 3d |  | 6d → 7d |  |  |
| 32 | Tin bài chi tiết | 2010-09-22 → 2010-09-27 (+5d) | 2010-09-23 → 2010-09-27 (+4d) | 2d → 1d |  | 6d → 7d |  |  |
| 33 | In bài viết | 2010-09-24 → 2010-09-28 (+4d) | 2010-09-24 → 2010-09-28 (+4d) |  |  | 6d → 7d |  |  |
| 34 | **Photo** | 2010-09-27 → 2010-09-29 (+2d) | 2010-09-28 → 2010-09-29 (+1d) | 2d → 1d |  | 4d → 6d |  |  |
| 35 | Slide show | 2010-09-28 → 2010-09-29 (+1d) | 2010-09-28 → 2010-09-29 (+1d) |  |  | 4d → 6d |  |  |
| 36 | Thông tin khác | 2010-09-27 → 2010-09-29 (+2d) | 2010-09-27 → 2010-09-29 (+2d) |  |  | 5d → 7d | 44 → 33 | resources Cản Mạnh Tuấn → Lục Văn Tiến |
| 40 | Phản hồi bài viết | 2010-09-21 → 2010-10-01 (+10d) | 2010-09-21 → 2010-10-01 (+10d) |  |  | 9d → 6d | 30 → 38 | resources Cản Mạnh Tuấn → Đào Tuấn Anh |
| 41 | Thăm dò | 2010-09-16 → 2010-09-22 A (+6d) | 2010-09-20 → 2010-09-23 (+3d) | 3d → 2d | 0% → 70% | 5d → 12d |  |  |
| 42 | Tìm kiếm | 2010-09-21 → 2010-09-24 A (+3d) | 2010-09-21 → 2010-09-24 A (+3d) |  | 0% → 100% | 5d → none |  |  |
| 43 | Email bài viết | 2010-09-22 → 2010-09-27 A (+5d) | 2010-09-22 → 2010-09-27 A (+5d) |  | 0% → 100% | 5d → none |  |  |
| 44 | RSS | 2010-09-23 → 2010-09-28 A (+5d) | 2010-09-24 → 2010-09-29 A (+5d) |  | 0% → 100% | 5d → none |  |  |
| 46 | **Trang Thể thao** |  | 2010-10-13 → 2010-10-12 (-1d) | 20d → 19d |  |  |  |  |
| 48 | **Dựng trang** |  | 2010-10-13 → 2010-10-11 (-2d) | 9d → 7d |  |  |  |  |
| 55 | **Photo** | 2010-10-08 → 2010-10-07 (-1d) | 2010-10-12 → 2010-10-08 (-4d) | 3d → 2d |  |  |  |  |
| 57 | Thông tin khác | 2010-10-12 → 2010-10-07 (-5d) | 2010-10-12 → 2010-10-07 (-5d) |  |  | 0d → 1d | 67 → 54 |  |
| 58 | **Video** | 2010-10-11 → 2010-10-08 (-3d) | 2010-10-13 → 2010-10-11 (-2d) | 3d → 2d |  |  |  |  |
| 60 | Thông tin khác | 2010-10-13 → 2010-10-08 (-5d) | 2010-10-13 → 2010-10-08 (-5d) |  |  | 0d → 1d |  |  |
| 69 | **Update** | 2010-09-06 A | 2010-09-10 → 2010-10-01 (+21d) | 5d → 20d | 0% → 50% | 26d → 10d |  |  |
| 70 | LayoutDAO | 2010-09-06 A | 2010-09-08 → 2010-09-07 A (-1d) | 3d → 2d | 0% → 100% | 26d → none |  | resources Cản Mạnh Tuấn; Đào Tuấn Anh → Cản Mạnh Tuấn |
| 71 | User, Visit | 2010-09-09 → 2010-09-30 (+21d) | 2010-09-10 → 2010-10-01 (+21d) |  |  | 26d → 10d | 70 → 35 |  |
| 72 | **Test** | 2010-09-15 → 2010-09-17 A (+2d) | 2010-10-18 → 2010-10-15 (-3d) | 24d → 21d | 0% → 15% |  |  |  |
| 73 | Back-end | 2010-09-15 → 2010-09-17 (+2d) | 2010-09-17 → 2010-09-21 (+4d) |  |  | 21d → 18d |  |  |
| 74 | Trang Clip | 2010-10-12 → 2010-09-21 A (-21d) | 2010-10-14 → 2010-09-23 (-21d) |  | 0% → 60% | 2d → 16d |  |  |
| 75 | Trang Tiếng Anh | 2010-09-29 → 2010-10-13 (+14d) | 2010-10-01 → 2010-10-15 (+14d) |  |  | 11d → 0d |  |  |
| 76 | Trang Thể thao | 2010-10-14 → 2010-10-13 (-1d) | 2010-10-18 → 2010-10-15 (-3d) |  |  |  |  |  |
